# Pikes Peak 2014 2015

Schedule from GanttProject, 2014-07-13 to 2015-06-28.
Buckeye Current
Holidays every year on 01-01, 07-04, 11-11, 12-25

## Calendars

- Project calendar: Mon-Sun working. Exceptions (off unless hours are given): 2014-09-01, 2014-10-13, 2014-11-27, 2015-01-19, 2015-02-16, 2015-05-25.

## Schedule

| ID | WBS | Task | Type | Duration | Start | Finish | Predecessors |
| --- | --- | --- | --- | --- | --- | --- | --- |
| 1 | 1 | Pikes Peak | milestone | 0d | 2015-06-28 | 2015-06-28 |  |
| 2 | 2 | Autum Sem. | milestone | 0d | 2014-08-27 | 2014-08-27 |  |
| 3 | 3 | Autum Finals |  | 7d | 2014-12-11 | 2014-12-17 |  |
| 4 | 4 | Winter Break |  | 26d | 2014-12-18 | 2015-01-14 |  |
| 5 | 5 | Spring Sem | milestone | 0d | 2015-01-13 | 2015-01-13 |  |
| 6 | 6 | Spring Finals |  | 7d | 2015-04-29 | 2015-05-05 |  |
| 7 | 7 | Summer Break | milestone | 0d | 2015-05-04 | 2015-05-04 |  |
| 8 | 8 | Define Requirements (RW-3) |  | 3d | 2014-07-13 | 2014-07-15 |  |
| 9 | 9 | Design System (RW-3) |  | 4d | 2014-07-16 | 2014-07-19 | 8 |
| 10 | 10 | **Build (RW-3)** |  | 280d | 2014-07-20 | 2015-05-03 | 9 |
| 11 | 10.1 | **Powertrain** |  | 229d | 2014-07-20 | 2015-03-13 | 9 |
| 12 | 10.1.1 | Define Requirements (Powertrain) |  | 33d | 2014-07-20 | 2014-08-21 | 9 |
| 13 | 10.1.2 | Design System (Powertrain) |  | 7d | 2014-08-22 | 2014-08-28 | 12 |
| 14 | 10.1.3 | **Build (Powertrain)** |  | 187d | 2014-08-29 | 2015-03-11 | 13 |
| 15 | 10.1.3.1 | **Motor** |  | 69d | 2014-08-29 | 2014-11-07 | 13 |
| 16 | 10.1.3.1.1 | Define Requirements (Motor) |  | 1d | 2014-08-29 | 2014-08-29 | 13 |
| 17 | 10.1.3.1.2 | **Design System (Motor)** |  | 8d | 2014-08-30 | 2014-09-07 | 16 |
| 18 | 10.1.3.1.2.1 | Choose Motor |  | 8d | 2014-08-30 | 2014-09-07 | 16 |
| 19 | 10.1.3.1.3 | **Build (Motor)** |  | 60d | 2014-09-08 | 2014-11-07 | 17 |
| 20 | 10.1.3.1.3.1 | Purchase Motor |  | 30d | 2014-09-08 | 2014-10-07 | 17 |
| 21 | 10.1.3.1.3.2 | Recieve Motor |  | 30d | 2014-10-08 | 2014-11-07 | 20 |
| 22 | 10.1.3.2 | **Motor Controller** |  | 120d | 2014-08-29 | 2014-12-31 | 13 |
| 23 | 10.1.3.2.1 | Define Requirements (M/C) |  | 1d | 2014-08-29 | 2014-08-29 | 13 |
| 24 | 10.1.3.2.2 | **Design System (M/C)** |  | 8d | 2014-08-30 | 2014-09-07 | 23 |
| 25 | 10.1.3.2.2.1 | Choose Controller |  | 8d | 2014-08-30 | 2014-09-07 | 23 |

| ID | WBS | Task | Duration | Start | Finish | Predecessors |
| --- | --- | --- | --- | --- | --- | --- |
| 26 | 10.1.3.2.3 | **Build (M/C)** | 111d | 2014-09-08 | 2014-12-31 | 24 |
| 27 | 10.1.3.2.3.1 | Purchase Controller | 30d | 2014-09-08 | 2014-10-07 | 24 |
| 28 | 10.1.3.2.3.2 | Recieve Controller | 51d | 2014-10-08 | 2014-11-30 | 27 |
| 29 | 10.1.3.2.3.3 | Configure Controller to Motor | 30d | 2014-12-01 | 2014-12-31 | 21, 28 |
| 30 | 10.1.3.3 | **Pack** | 157d | 2014-08-29 | 2015-02-08 | 13 |
| 31 | 10.1.3.3.1 | Define Requirements (Pack) | 1d | 2014-08-29 | 2014-08-29 | 13 |
| 32 | 10.1.3.3.2 | **Design System (Pack)** | 22d | 2014-08-30 | 2014-09-21 | 31 |
| 33 | 10.1.3.3.2.1 | Test Sample Cells | 7d | 2014-11-09 | 2014-11-16 |  |
| 34 | 10.1.3.3.2.2 | Choose Cells | 2d | 2014-11-17 | 2014-11-18 | 33 |
| 35 | 10.1.3.3.2.3 | Order Cells | 5d | 2014-11-19 | 2014-11-23 | 34 |
| 36 | 10.1.3.3.2.4 | Design Cell Test Fixure | 14d | 2014-11-09 | 2014-11-23 |  |
| 37 | 10.1.3.3.2.5 | Module Layout | 14d | 2014-11-09 | 2014-11-23 |  |
| 38 | 10.1.3.3.3 | **Build (Pack)** | 134d | 2014-09-22 | 2015-02-08 | 32 |
| 39 | 10.1.3.3.3.1 | Recieve Cells | 13d | 2014-11-24 | 2014-12-07 | 35 |
| 40 | 10.1.3.3.3.2 | Test Prototype Module | 13d | 2014-11-24 | 2014-12-07 | 37 |
| 41 | 10.1.3.3.3.3 | Build Test Cell Fixure | 13d | 2014-11-24 | 2014-12-07 | 36 |
| 42 | 10.1.3.3.3.4 | Finalize Module Layout | 20d | 2014-12-08 | 2014-12-28 | 40 |
| 43 | 10.1.3.3.3.5 | Test Cells | 21d | 2014-12-08 | 2014-12-29 | 41 |
| 44 | 10.1.3.3.3.6 | Build Module | 40d | 2014-12-29 | 2015-02-08 | 42 |
| 45 | 10.1.3.4 | Final Drive Design | 30d | 2015-02-09 | 2015-03-11 | 13, 18, 25, 44 |
| 46 | 10.1.3.5 | Cooling | 30d | 2014-09-08 | 2014-10-07 | 13, 18, 25 |
| 47 | 10.1.4 | **Integration Testing (Powertrain)** | 69d | 2015-01-02 | 2015-03-13 |  |
| 48 | 10.1.4.1 | Test Motor with Controller | 60d | 2015-01-02 | 2015-03-04 | 29, 46, 120, 121, 122, 126, 127 |
| 49 | 10.1.4.2 | Test Battery with BMS | 30d | 2015-02-11 | 2015-03-13 | 120, 123, 124, 125, 128, 131 |

| ID | WBS | Task | Duration | Start | Finish | Predecessors |
| --- | --- | --- | --- | --- | --- | --- |
| 50 | 10.2 | **Chassis** | 242d | 2014-07-20 | 2015-03-26 | 9 |
| 51 | 10.2.1 | Define Requirements (Chassis) | 31d | 2014-07-20 | 2014-08-19 | 9 |
| 52 | 10.2.2 | Design System (Chassis) | 11d | 2014-08-20 | 2014-08-30 | 51 |
| 53 | 10.2.3 | **Build (Chassis)** | 170d | 2014-08-31 | 2015-02-24 | 52 |
| 54 | 10.2.3.1 | **Frame** | 109d | 2014-08-31 | 2014-12-21 | 52 |
| 55 | 10.2.3.1.1 | Define Requirements(Frame) | 1d | 2014-08-31 | 2014-08-31 | 52 |
| 56 | 10.2.3.1.2 | **Design (Frame)** | 34d | 2014-09-02 | 2014-10-05 | 55 |
| 57 | 10.2.3.1.2.1 | Select Frame | 6d | 2014-09-02 | 2014-09-07 |  |
| 58 | 10.2.3.1.2.2 | Purchase Frame | 14d | 2014-09-08 | 2014-09-21 | 57 |
| 59 | 10.2.3.1.2.3 | Get Frame CAD | 14d | 2014-09-08 | 2014-09-21 | 57 |
| 60 | 10.2.3.1.2.4 | CAD rolling chassis | 14d | 2014-09-22 | 2014-10-05 | 59 |
| 61 | 10.2.3.1.3 | **Build (Frame)** | 74d | 2014-10-06 | 2014-12-21 | 56 |
| 62 | 10.2.3.1.3.1 | Frame inspection | 30d | 2014-10-06 | 2014-11-05 | 56 |
| 63 | 10.2.3.1.3.2 | Assemble rolling Chassis | 14d | 2014-11-06 | 2014-11-20 | 58, 62 |
| 64 | 10.2.3.1.3.3 | Assign Chasis Volume | 14d | 2014-10-06 | 2014-10-20 | 59, 60 |
| 65 | 10.2.3.1.3.4 | Do required rolling Chassis Maintienance | 30d | 2014-11-21 | 2014-12-21 | 63 |
| 66 | 10.2.3.2 | **Mounting Hardware** | 121d | 2014-10-21 | 2015-02-24 | 52, 64 |
| 67 | 10.2.3.2.1 | Design Requirements (Mounting) | 36d | 2014-10-21 | 2014-11-26 | 52 |
| 68 | 10.2.3.2.2 | **Design (Mounting)** | 47d | 2014-11-29 | 2015-01-16 | 67, 104 |
| 69 | 10.2.3.2.2.1 | Define Requirements (Battery Frame) | 7d | 2014-11-29 | 2014-12-05 | 67 |
| 70 | 10.2.3.2.2.2 | Design (Battery Frame) | 40d | 2014-12-06 | 2015-01-16 | 69 |
| 71 | 10.2.3.2.2.3 | Define Requirements (Motor Mount) | 7d | 2014-11-29 | 2014-12-05 | 18, 67 |
| 72 | 10.2.3.2.2.4 | Design (Motor Mount) | 40d | 2014-12-06 | 2015-01-16 | 71 |
| 73 | 10.2.3.2.2.5 | Define Requirements (Controller Mount) | 7d | 2014-11-29 | 2014-12-05 | 25, 67 |
| 74 | 10.2.3.2.2.6 | Design (Controller Mount) | 40d | 2014-12-06 | 2015-01-16 | 73 |
| 75 | 10.2.3.2.2.7 | Define Requirements (Fairing Mount) | 7d | 2014-11-29 | 2014-12-05 | 67 |
| 76 | 10.2.3.2.2.8 | Design (Fairing Mount) | 14d | 2014-12-06 | 2014-12-19 | 75, 104 |

| ID | WBS | Task | Duration | Start | Finish | Predecessors |
| --- | --- | --- | --- | --- | --- | --- |
| 77 | 10.2.3.2.3 | **Build (Mounting)** | 37d | 2015-01-17 | 2015-02-24 | 68 |
| 78 | 10.2.3.2.3.1 | Check CAD for interference | 7d | 2015-01-17 | 2015-01-24 | 68 |
| 79 | 10.2.3.2.3.2 | Build (Battery frame) | 30d | 2015-01-25 | 2015-02-24 | 70, 78 |
| 80 | 10.2.3.2.3.3 | Build (Motor Mount) | 30d | 2015-01-25 | 2015-02-24 | 72, 78 |
| 81 | 10.2.3.2.3.4 | Build (Controller Mount) | 30d | 2015-01-25 | 2015-02-24 | 74, 78 |
| 82 | 10.2.3.2.3.5 | Build (Fairing Mount) | 30d | 2015-01-25 | 2015-02-24 | 76, 78 |
| 83 | 10.2.3.3 | **Suspension and Brakes** | 163d | 2014-08-31 | 2015-02-17 | 52 |
| 84 | 10.2.3.3.1 | Define Requirements (S and B) | 14d | 2014-08-31 | 2014-09-14 | 52 |
| 85 | 10.2.3.3.2 | **Design (S and B)** | 117d | 2014-09-15 | 2015-01-14 | 84 |
| 86 | 10.2.3.3.2.1 | Choose Suspension | 29d | 2014-09-15 | 2014-10-14 | 84 |
| 87 | 10.2.3.3.2.2 | Choose Brakes | 29d | 2014-09-15 | 2014-10-14 | 84 |
| 88 | 10.2.3.3.2.3 | Design suspension | 37d | 2014-10-15 | 2014-11-21 | 86 |
| 89 | 10.2.3.3.2.4 | Purchase Suspendsion Components (finish design) | 14d | 2014-11-22 | 2014-12-06 | 86, 88 |
| 90 | 10.2.3.3.2.5 | Build Suspension | 37d | 2014-12-07 | 2015-01-14 | 88, 89 |
| 91 | 10.2.3.3.2.6 | Purchase Brakes | 30d | 2014-10-15 | 2014-11-14 | 87 |
| 92 | 10.2.3.3.3 | **Build (S and B)** | 30d | 2015-01-17 | 2015-02-17 |  |
| 93 | 10.2.3.3.3.1 | Suspension Testing and Tunning | 30d | 2015-01-17 | 2015-02-17 | 68, 90 |
| 94 | 10.2.4 | **Integration Test (Chassis)** | 30d | 2015-02-25 | 2015-03-26 | 53, 54, 66, 83 |
| 95 | 10.2.4.1 | Test Fit mounting hardware | 30d | 2015-02-25 | 2015-03-26 | 53 |
| 96 | 10.3 | **Aerodynamics** | 216d | 2014-07-20 | 2015-02-28 | 9 |
| 97 | 10.3.1 | Define Requirements (Aero) | 56d | 2014-07-20 | 2014-09-14 | 9 |
| 98 | 10.3.2 | Ansys Setup | 91d | 2014-07-20 | 2014-10-20 | 9 |
| 99 | 10.3.3 | Create Aero CAD library | 91d | 2014-07-20 | 2014-10-20 | 9 |
| 100 | 10.3.4 | RW-2.X redesign | 91d | 2014-07-20 | 2014-10-20 | 9 |

| ID | WBS | Task | Duration | Start | Finish | Predecessors |
| --- | --- | --- | --- | --- | --- | --- |
| 101 | 10.3.5 | **Design System (Aero)** | 93d | 2014-09-15 | 2014-12-19 | 97 |
| 102 | 10.3.5.1 | Decide Mold Material | 35d | 2014-09-15 | 2014-10-20 |  |
| 103 | 10.3.5.2 | Decide Fairing Material | 65d | 2014-09-15 | 2014-11-20 | 97 |
| 104 | 10.3.5.3 | Design and CAD Fairing | 37d | 2014-10-21 | 2014-11-28 | 98, 99, 102 |
| 105 | 10.3.5.4 | Purchase Fairing components | 21d | 2014-11-29 | 2014-12-19 | 103, 104 |
| 106 | 10.3.6 | **Build (Aero)** | 67d | 2014-12-20 | 2015-02-28 | 101 |
| 107 | 10.3.6.1 | Build Molds | 30d | 2014-12-20 | 2015-01-21 | 105 |
| 108 | 10.3.6.2 | Build Fairings | 30d | 2015-01-22 | 2015-02-21 | 107 |
| 109 | 10.3.6.3 | Paint Fairings | 7d | 2015-02-22 | 2015-02-28 | 108 |
| 110 | 10.4 | **Electronics** | 259d | 2014-07-20 | 2015-04-12 | 9 |
| 111 | 10.4.1 | Define Requirements (Electronics) | 43d | 2014-07-20 | 2014-08-31 | 9 |
| 112 | 10.4.2 | **Design (Electronics)** | 56d | 2014-09-02 | 2014-10-28 | 111 |
| 113 | 10.4.2.1 | Define Data Bus | 6d | 2014-09-02 | 2014-09-07 | 111 |
| 114 | 10.4.2.2 | Define subcomponents | 7d | 2014-09-08 | 2014-09-14 | 111, 113 |
| 115 | 10.4.2.3 | Define connectors | 14d | 2014-09-02 | 2014-09-15 | 111 |
| 116 | 10.4.2.4 | Design Components | 36d | 2014-09-15 | 2014-10-21 | 113, 114 |
| 117 | 10.4.2.5 | Design all Software | 36d | 2014-09-15 | 2014-10-21 | 113, 114 |
| 118 | 10.4.2.6 | Define Dimensions of all hardware | 7d | 2014-10-22 | 2014-10-28 | 64, 115, 116, 117 |
| 119 | 10.4.3 | **Buid (Electronics)** | 100d | 2014-10-29 | 2015-02-10 | 112 |
| 120 | 10.4.3.1 | Low Voltaage Power | 45d | 2014-10-29 | 2014-12-14 | 112 |
| 121 | 10.4.3.2 | High Voltage Switching | 45d | 2014-10-29 | 2014-12-14 | 112 |
| 122 | 10.4.3.3 | Rider Interface | 45d | 2014-10-29 | 2014-12-14 | 118 |
| 123 | 10.4.3.4 | Charging | 99d | 2014-10-29 | 2015-02-09 | 112 |
| 124 | 10.4.3.5 | Battery Managment system | 100d | 2014-10-29 | 2015-02-10 | 112 |

| ID | WBS | Task | Duration | Start | Finish | Predecessors | Complete |
| --- | --- | --- | --- | --- | --- | --- | --- |
| 125 | 10.4.3.6 | **Datalogging** | 100d | 2014-10-29 | 2015-02-10 | 112, 118 |  |
| 126 | 10.4.3.6.1 | Data Storage | 45d | 2014-10-29 | 2014-12-14 | 118 |  |
| 127 | 10.4.3.6.2 | m/c telemetry | 45d | 2014-10-29 | 2014-12-14 | 118 |  |
| 128 | 10.4.3.6.3 | Battery Telemetry | 100d | 2014-10-29 | 2015-02-10 | 118 |  |
| 129 | 10.4.3.6.4 | All | 100d | 2014-10-29 | 2015-02-10 | 118 |  |
| 130 | 10.4.3.7 | Wiring harness | 100d | 2014-10-29 | 2015-02-10 | 112 |  |
| 131 | 10.4.3.8 | Balancing | 100d | 2014-10-29 | 2015-02-10 | 118 |  |
| 132 | 10.4.4 | **Integration Testing (Electronics)** | 60d | 2015-02-11 | 2015-04-12 | 119 |  |
| 133 | 10.4.4.1 | Software Testing | 30d | 2015-02-11 | 2015-03-13 | 119 | 1% |
| 134 | 10.4.4.2 | Unit Testing Critical | 30d | 2015-02-11 | 2015-03-13 | 119 |  |
| 135 | 10.4.4.3 | Full Electrical testing | 30d | 2015-03-14 | 2015-04-12 | 119, 134 |  |
| 136 | 10.5 | Mount Powertrain | 21d | 2015-03-14 | 2015-04-03 | 11, 65 |  |
| 137 | 10.6 | Mount Electronics | 7d | 2015-04-13 | 2015-04-19 | 110, 136 |  |
| 138 | 10.7 | Assemble Full Vehicle | 14d | 2015-04-20 | 2015-05-03 | 50, 96, 136, 137 |  |
| 139 | 11 | **Integration Testing (RW-3)** | 52d | 2015-05-04 | 2015-06-25 | 10 |  |
| 140 | 11.1 | First Spin | 7d | 2015-05-04 | 2015-05-10 | 10 |  |
| 141 | 11.2 | Vehicle Dyno Testing | 15d | 2015-05-11 | 2015-05-26 | 140 |  |
| 142 | 11.3 | Vehicle Road Testing | 30d | 2015-05-27 | 2015-06-25 | 141 |  |
